# Implementación del CRM Predictivo y Retención Postventa — Essenza SPA

Schedule from MS Project, 2026-11-02 to 2027-04-30.
Essenza SPA

## Calendars

- Essenza - lunes a viernes con feriados: Mon-Fri 08:00-12:00, 13:00-17:00; Sat-Sun off. Exceptions (off unless hours are given): 2026-12-08 (Inmaculada Concepción), 2026-12-09 (Batalla de Ayacucho), 2026-12-25 (Navidad), 2027-01-01 (Año Nuevo), 2027-03-25 (Jueves Santo), 2027-03-26 (Viernes Santo).

## Resources

| Resource | Group |
| --- | --- |
| Director del proyecto | Equipo del proyecto |
| Analista funcional | Equipo del proyecto |
| Científico de datos | Equipo del proyecto |
| Desarrollador backend | Equipo del proyecto |
| Desarrollador frontend | Equipo del proyecto |
| QA y capacitación | Equipo del proyecto |
| Administradora | Essenza SPA |
| Dueña (patrocinadora) | Essenza SPA |

## Schedule

| ID | WBS | Task | Type | Duration | Start | Finish | Predecessors | Baseline start | Baseline finish | Baseline duration | Total slack | Free slack | Resources | Work | Text1 |
| --- | --- | --- | --- | --- | --- | --- | --- | --- | --- | --- | --- | --- | --- | --- | --- |
| 1 | 1 | **Implementación del CRM Predictivo y Retención Postventa — Essenza SPA** |  | 124d | 2026-11-02 | 2027-04-30 |  | 2026-11-02 | 2027-04-30 | 124d | 0d |  |  | 2326.4h |  |
| 2 | 1.1 | **Gestión del proyecto** |  | 124d | 2026-11-02 | 2027-04-30 |  | 2026-11-02 | 2027-04-30 | 124d | 0d |  |  | 414.4h |  |
| 3 | 1.1.1 | **EDT-1.1.01 · Acta de constitución y lanzamiento** |  | 4d | 2026-11-02 | 2026-11-05 |  | 2026-11-02 | 2026-11-05 | 4d | 0d |  |  | 32h | Director del proyecto |
| 4 | 1.1.1.1 | Redactar el acta de constitución con objetivos medibles |  | 2d | 2026-11-02 | 2026-11-03 |  | 2026-11-02 | 2026-11-03 | 2d | 0d |  | Director del proyecto | 16h | Director del proyecto |
| 5 | 1.1.1.2 | Identificar interesados y responsables |  | 1d | 2026-11-04 | 2026-11-04 | 4 | 2026-11-04 | 2026-11-04 | 1d | 0d |  | Director del proyecto | 8h | Director del proyecto |
| 6 | 1.1.1.3 | Preparar agenda y materiales del lanzamiento |  | 1d | 2026-11-05 | 2026-11-05 | 5 | 2026-11-05 | 2026-11-05 | 1d | 0d |  | Director del proyecto | 8h | Director del proyecto |
| 7 | 1.1.1.4 | H0 · Reunión de lanzamiento realizada | milestone | 0d | 2026-11-05 | 2026-11-05 | 6 | 2026-11-05 | 2026-11-05 | 0d | 0d |  |  |  | Director del proyecto |
| 8 | 1.1.2 | **EDT-1.1.02 · Plan para la dirección del proyecto** |  | 8d | 2026-11-26 | 2026-12-07 |  | 2026-11-26 | 2026-12-07 | 8d | 6d |  |  | 56h | Director del proyecto |
| 9 | 1.1.2.1 | Elaborar la línea base del alcance (EDT y diccionario) |  | 2d | 2026-11-26 | 2026-11-27 | 33 | 2026-11-26 | 2026-11-27 | 2d | 7d | 0d | Director del proyecto | 16h | Director del proyecto |
| 10 | 1.1.2.2 | Elaborar las líneas base de cronograma y costos |  | 2d | 2026-11-30 | 2026-12-01 | 9 | 2026-11-30 | 2026-12-01 | 2d | 7d | 0d | Director del proyecto | 16h | Director del proyecto |
| 11 | 1.1.2.3 | Integrar planes de involucramiento, comunicaciones, calidad, recursos y riesgos |  | 2d | 2026-12-02 | 2026-12-03 | 10 | 2026-12-02 | 2026-12-03 | 2d | 7d | 1d | Director del proyecto | 16h | Director del proyecto |
| 12 | 1.1.2.4 | Aprobar el plan con la patrocinadora |  | 1d | 2026-12-07 | 2026-12-07 | 11, 48 | 2026-12-07 | 2026-12-07 | 1d | 6d | 0d | Director del proyecto | 8h | Director del proyecto |
| 13 | 1.1.3 | **EDT-1.1.03 · Seguimiento y control** |  | 92d | 2026-12-10 | 2027-04-22 |  | 2026-12-10 | 2027-04-22 | 92d | 6d |  |  | 294.4h | Director del proyecto |
| 14 | 1.1.3.1 | Emitir el informe semanal de estado (SPI, CPI, riesgos) |  | 92d | 2026-12-10 | 2027-04-22 | 12 | 2026-12-10 | 2027-04-22 | 92d | 6d |  | Director del proyecto [10%] | 73.6h | Director del proyecto |
| 15 | 1.1.3.2 | Conducir el comité de control de cambios |  | 92d | 2026-12-10 | 2027-04-22 | 12 | 2026-12-10 | 2027-04-22 | 92d | 6d |  | Director del proyecto [10%] | 73.6h | Director del proyecto |
| 16 | 1.1.3.3 | Actualizar registros de riesgos, incidentes y cambios |  | 92d | 2026-12-10 | 2027-04-22 | 12 | 2026-12-10 | 2027-04-22 | 92d | 6d |  | Director del proyecto [10%] | 73.6h | Director del proyecto |
| 17 | 1.1.3.4 | Reevaluar la matriz de involucramiento en cada hito |  | 92d | 2026-12-10 | 2027-04-22 | 12 | 2026-12-10 | 2027-04-22 | 92d | 6d |  | Director del proyecto [10%] | 73.6h | Director del proyecto |
| 18 | 1.1.4 | **EDT-1.1.04 · Cierre del proyecto** |  | 4d | 2027-04-27 | 2027-04-30 |  | 2027-04-27 | 2027-04-30 | 4d | 0d |  |  | 32h | Director del proyecto |
| 19 | 1.1.4.1 | Elaborar el informe final de indicadores frente a objetivos |  | 2d | 2027-04-27 | 2027-04-28 | 173 | 2027-04-27 | 2027-04-28 | 2d | 0d |  | Director del proyecto | 16h | Director del proyecto |
| 20 | 1.1.4.2 | Consolidar las lecciones aprendidas |  | 1d | 2027-04-29 | 2027-04-29 | 19 | 2027-04-29 | 2027-04-29 | 1d | 0d |  | Director del proyecto | 8h | Director del proyecto |
| 21 | 1.1.4.3 | Archivar la documentación del proyecto |  | 1d | 2027-04-30 | 2027-04-30 | 20 | 2027-04-30 | 2027-04-30 | 1d | 0d |  | Director del proyecto | 8h | Director del proyecto |
| 22 | 1.1.4.4 | H5 · Acta de aceptación y cierre firmada | milestone | 0d | 2027-04-30 | 2027-04-30 | 21 | 2027-04-30 | 2027-04-30 | 0d | 0d |  |  |  | Director del proyecto |
| 23 | 1.2 | **Análisis y diseño** |  | 21d | 2026-11-06 | 2026-12-04 |  | 2026-11-06 | 2026-12-04 | 21d | 0d |  |  | 280h |  |
| 24 | 1.2.1 | **EDT-1.2.01 · Levantamiento AS-IS y requisitos** |  | 7d | 2026-11-06 | 2026-11-16 |  | 2026-11-06 | 2026-11-16 | 7d | 0d |  |  | 72h | Analista funcional |
| 25 | 1.2.1.1 | Entrevistar a la dueña, administradora, recepcionista y cosmiatras |  | 2d | 2026-11-06 | 2026-11-09 | 7 | 2026-11-06 | 2026-11-09 | 2d | 0d |  | Analista funcional; Administradora | 32h | Analista funcional, Administradora |
| 26 | 1.2.1.2 | Observar el registro de atenciones en el Excel |  | 2d | 2026-11-10 | 2026-11-11 | 25 | 2026-11-10 | 2026-11-11 | 2d | 0d |  | Analista funcional | 16h | Analista funcional |
| 27 | 1.2.1.3 | Modelar el flujo AS-IS e identificar puntos de dolor |  | 2d | 2026-11-12 | 2026-11-13 | 26 | 2026-11-12 | 2026-11-13 | 2d | 0d |  | Analista funcional | 16h | Analista funcional |
| 28 | 1.2.1.4 | Priorizar necesidades con la patrocinadora |  | 1d | 2026-11-16 | 2026-11-16 | 27 | 2026-11-16 | 2026-11-16 | 1d | 0d |  | Analista funcional | 8h | Analista funcional |

Notes:
- 14: Actividad de nivel de esfuerzo: se ejecuta de forma continua desde la aprobación del plan hasta el fin de la estabilización.
- 15: Actividad de nivel de esfuerzo: se ejecuta de forma continua desde la aprobación del plan hasta el fin de la estabilización.
- 16: Actividad de nivel de esfuerzo: se ejecuta de forma continua desde la aprobación del plan hasta el fin de la estabilización.
- 17: Actividad de nivel de esfuerzo: se ejecuta de forma continua desde la aprobación del plan hasta el fin de la estabilización.

| ID | WBS | Task | Type | Duration | Start | Finish | Predecessors | Baseline start | Baseline finish | Baseline duration | Total slack | Free slack | Resources | Work | Text1 |
| --- | --- | --- | --- | --- | --- | --- | --- | --- | --- | --- | --- | --- | --- | --- | --- |
| 29 | 1.2.2 | **EDT-1.2.02 · Especificación de requisitos y trazabilidad** |  | 7d | 2026-11-17 | 2026-11-25 |  | 2026-11-17 | 2026-11-25 | 7d | 0d |  |  | 56h | Analista funcional |
| 30 | 1.2.2.1 | Redactar fichas de requisitos con criterios de aceptación |  | 2d | 2026-11-17 | 2026-11-18 | 28 | 2026-11-17 | 2026-11-18 | 2d | 0d |  | Analista funcional | 16h | Analista funcional |
| 31 | 1.2.2.2 | Diseñar el flujo TO-BE |  | 2d | 2026-11-19 | 2026-11-20 | 30 | 2026-11-19 | 2026-11-20 | 2d | 0d |  | Analista funcional | 16h | Analista funcional |
| 32 | 1.2.2.3 | Construir la matriz requisito – paquete – prueba |  | 2d | 2026-11-23 | 2026-11-24 | 31 | 2026-11-23 | 2026-11-24 | 2d | 0d |  | Analista funcional | 16h | Analista funcional |
| 33 | 1.2.2.4 | Validar y firmar los requisitos con la patrocinadora |  | 1d | 2026-11-25 | 2026-11-25 | 32 | 2026-11-25 | 2026-11-25 | 1d | 0d |  | Analista funcional | 8h | Analista funcional |
| 34 | 1.2.3 | **EDT-1.2.03 · Arquitectura y modelo de datos** |  | 7d | 2026-11-26 | 2026-12-04 |  | 2026-11-26 | 2026-12-04 | 7d | 0d |  |  | 56h | Desarrollador backend |
| 35 | 1.2.3.1 | Diseñar la arquitectura FastAPI – SQLite – React – modelo |  | 2d | 2026-11-26 | 2026-11-27 | 33 | 2026-11-26 | 2026-11-27 | 2d | 0d |  | Desarrollador backend | 16h | Desarrollador backend |
| 36 | 1.2.3.2 | Diseñar tablas de clientes, atenciones, predicciones y sincronización |  | 2d | 2026-11-30 | 2026-12-01 | 35 | 2026-11-30 | 2026-12-01 | 2d | 0d |  | Desarrollador backend | 16h | Desarrollador backend |
| 37 | 1.2.3.3 | Definir el formato y la validación del Excel |  | 2d | 2026-12-02 | 2026-12-03 | 36 | 2026-12-02 | 2026-12-03 | 2d | 0d |  | Desarrollador backend | 16h | Desarrollador backend |
| 38 | 1.2.3.4 | Definir el esquema de seguridad por roles |  | 1d | 2026-12-04 | 2026-12-04 | 37 | 2026-12-04 | 2026-12-04 | 1d | 0d |  | Desarrollador backend | 8h | Desarrollador backend |
| 39 | 1.2.4 | **EDT-1.2.04 · Prototipo de interfaz (UX/UI)** |  | 7d | 2026-11-26 | 2026-12-04 |  | 2026-11-26 | 2026-12-04 | 7d | 0d |  |  | 56h | Desarrollador frontend |
| 40 | 1.2.4.1 | Bocetar dashboard, clientes, ficha 360° y alertas |  | 2d | 2026-11-26 | 2026-11-27 | 33 | 2026-11-26 | 2026-11-27 | 2d | 0d |  | Desarrollador frontend | 16h | Desarrollador frontend |
| 41 | 1.2.4.2 | Bocetar el Centro de Retención y el detalle de caso |  | 2d | 2026-11-30 | 2026-12-01 | 40 | 2026-11-30 | 2026-12-01 | 2d | 0d |  | Desarrollador frontend | 16h | Desarrollador frontend |
| 42 | 1.2.4.3 | Definir la guía visual |  | 2d | 2026-12-02 | 2026-12-03 | 41 | 2026-12-02 | 2026-12-03 | 2d | 0d |  | Desarrollador frontend | 16h | Desarrollador frontend |
| 43 | 1.2.4.4 | Probar el prototipo con administradora y recepcionista |  | 1d | 2026-12-04 | 2026-12-04 | 42 | 2026-12-04 | 2026-12-04 | 1d | 0d |  | Desarrollador frontend | 8h | Desarrollador frontend |
| 44 | 1.2.5 | **EDT-1.2.05 · Reglas de negocio de retención** |  | 7d | 2026-11-26 | 2026-12-04 |  | 2026-11-26 | 2026-12-04 | 7d | 0d |  |  | 40h | Analista funcional |
| 45 | 1.2.5.1 | Definir umbrales de riesgo y prioridades (Urgente, Alta, Media, Baja) |  | 2d | 2026-11-26 | 2026-11-27 | 33 | 2026-11-26 | 2026-11-27 | 2d | 2d | 0d | Analista funcional | 16h | Analista funcional |
| 46 | 1.2.5.2 | Definir motivos de riesgo y acciones sugeridas |  | 1d | 2026-11-30 | 2026-11-30 | 45 | 2026-11-30 | 2026-11-30 | 1d | 2d | 0d | Analista funcional | 8h | Analista funcional |
| 47 | 1.2.5.3 | Definir beneficios, plantillas y reglas de contacto |  | 2d | 2026-12-01 | 2026-12-02 | 46 | 2026-12-01 | 2026-12-02 | 2d | 2d |  | Analista funcional | 16h | Analista funcional |
| 48 | 1.2.5.4 | H1 · Requisitos y diseño aprobados | milestone | 0d | 2026-12-04 | 2026-12-04 | 47, 38, 43 | 2026-12-04 | 2026-12-04 | 0d | 0d |  |  |  | Analista funcional |
| 49 | 1.3 | **Datos y modelo predictivo** |  | 30d | 2026-12-07 | 2027-01-21 |  | 2026-12-07 | 2027-01-21 | 30d | 2d |  |  | 248h |  |
| 50 | 1.3.1 | **EDT-1.3.01 · Registro operacional Excel normalizado** |  | 3d | 2026-12-07 | 2026-12-11 |  | 2026-12-07 | 2026-12-11 | 3d | 2d |  |  | 24h | Científico de datos |
| 51 | 1.3.1.1 | Definir la hoja y las 25 columnas del registro |  | 1d | 2026-12-07 | 2026-12-07 | 48 | 2026-12-07 | 2026-12-07 | 1d | 2d | 0d | Científico de datos | 8h | Científico de datos |
| 52 | 1.3.1.2 | Normalizar formatos de fecha, montos y códigos |  | 1d | 2026-12-10 | 2026-12-10 | 51 | 2026-12-10 | 2026-12-10 | 1d | 2d | 0d | Científico de datos | 8h | Científico de datos |
| 53 | 1.3.1.3 | Validar la plantilla con la recepcionista |  | 1d | 2026-12-11 | 2026-12-11 | 52 | 2026-12-11 | 2026-12-11 | 1d | 2d | 0d | Científico de datos | 8h | Científico de datos |

| ID | WBS | Task | Type | Duration | Start | Finish | Predecessors | Baseline start | Baseline finish | Baseline duration | Total slack | Free slack | Resources | Work | Text1 |
| --- | --- | --- | --- | --- | --- | --- | --- | --- | --- | --- | --- | --- | --- | --- | --- |
| 54 | 1.3.2 | **EDT-1.3.02 · Dataset depurado y calidad de datos** |  | 6d | 2026-12-14 | 2026-12-21 |  | 2026-12-14 | 2026-12-21 | 6d | 3d |  |  | 48h | Científico de datos |
| 55 | 1.3.2.1 | Detectar duplicados, nulos y valores atípicos |  | 2d | 2026-12-14 | 2026-12-15 | 53 | 2026-12-14 | 2026-12-15 | 2d | 3d | 0d | Científico de datos | 16h | Científico de datos |
| 56 | 1.3.2.2 | Corregir o descartar registros inválidos |  | 2d | 2026-12-16 | 2026-12-17 | 55 | 2026-12-16 | 2026-12-17 | 2d | 3d | 0d | Científico de datos | 16h | Científico de datos |
| 57 | 1.3.2.3 | Anonimizar datos personales para el entrenamiento |  | 1d | 2026-12-18 | 2026-12-18 | 56 | 2026-12-18 | 2026-12-18 | 1d | 3d | 0d | Científico de datos | 8h | Científico de datos |
| 58 | 1.3.2.4 | Emitir el reporte de calidad de datos |  | 1d | 2026-12-21 | 2026-12-21 | 57 | 2026-12-21 | 2026-12-21 | 1d | 3d | 0d | Científico de datos | 8h | Científico de datos |
| 59 | 1.3.3 | **EDT-1.3.03 · Ingeniería de características** |  | 7d | 2026-12-22 | 2026-12-31 |  | 2026-12-22 | 2026-12-31 | 7d | 3d |  |  | 56h | Científico de datos |
| 60 | 1.3.3.1 | Consolidar atenciones por cliente |  | 2d | 2026-12-22 | 2026-12-23 | 58 | 2026-12-22 | 2026-12-23 | 2d | 3d | 0d | Científico de datos | 16h | Científico de datos |
| 61 | 1.3.3.2 | Calcular recencia, frecuencia, gasto y score RFM |  | 3d | 2026-12-24 | 2026-12-29 | 60 | 2026-12-24 | 2026-12-29 | 3d | 3d | 0d | Científico de datos | 24h | Científico de datos |
| 62 | 1.3.3.3 | Definir la variable de abandono (más de 120 días sin visita) |  | 1d | 2026-12-30 | 2026-12-30 | 61 | 2026-12-30 | 2026-12-30 | 1d | 3d | 0d | Científico de datos | 8h | Científico de datos |
| 63 | 1.3.3.4 | Codificar variables categóricas |  | 1d | 2026-12-31 | 2026-12-31 | 62 | 2026-12-31 | 2026-12-31 | 1d | 3d | 0d | Científico de datos | 8h | Científico de datos |
| 64 | 1.3.4 | **EDT-1.3.04 · Modelo XGBoost entrenado** |  | 9d | 2027-01-04 | 2027-01-14 |  | 2027-01-04 | 2027-01-14 | 9d | 3d |  |  | 72h | Científico de datos |
| 65 | 1.3.4.1 | Separar datos de entrenamiento y prueba |  | 1d | 2027-01-04 | 2027-01-04 | 63 | 2027-01-04 | 2027-01-04 | 1d | 3d | 0d | Científico de datos | 8h | Científico de datos |
| 66 | 1.3.4.2 | Entrenar un modelo base |  | 3d | 2027-01-05 | 2027-01-07 | 65 | 2027-01-05 | 2027-01-07 | 3d | 3d | 0d | Científico de datos | 24h | Científico de datos |
| 67 | 1.3.4.3 | Optimizar hiperparámetros con validación cruzada |  | 4d | 2027-01-08 | 2027-01-13 | 66 | 2027-01-08 | 2027-01-13 | 4d | 3d | 0d | Científico de datos | 32h | Científico de datos |
| 68 | 1.3.4.4 | Definir umbrales de riesgo bajo, medio y alto |  | 1d | 2027-01-14 | 2027-01-14 | 67 | 2027-01-14 | 2027-01-14 | 1d | 3d | 0d | Científico de datos | 8h | Científico de datos |
| 69 | 1.3.5 | **EDT-1.3.05 · Evaluación, interpretabilidad y empaquetado** |  | 5d | 2027-01-15 | 2027-01-21 |  | 2027-01-15 | 2027-01-21 | 5d | 3d |  |  | 48h | Científico de datos |
| 70 | 1.3.5.1 | Calcular métricas y matriz de confusión |  | 1d | 2027-01-15 | 2027-01-15 | 68 | 2027-01-15 | 2027-01-15 | 1d | 3d | 0d | Científico de datos | 8h | Científico de datos |
| 71 | 1.3.5.2 | Explicar las variables con SHAP |  | 2d | 2027-01-18 | 2027-01-19 | 70 | 2027-01-18 | 2027-01-19 | 2d | 3d | 0d | Científico de datos | 16h | Científico de datos |
| 72 | 1.3.5.3 | Validar resultados con clientes conocidos por la dueña |  | 1d | 2027-01-20 | 2027-01-20 | 71 | 2027-01-20 | 2027-01-20 | 1d | 3d | 0d | Científico de datos; Dueña (patrocinadora) | 16h | Científico de datos, Dueña (patrocinadora) |
| 73 | 1.3.5.4 | Serializar modelo y metadatos |  | 1d | 2027-01-21 | 2027-01-21 | 72 | 2027-01-21 | 2027-01-21 | 1d | 3d | 0d | Científico de datos | 8h | Científico de datos |
| 74 | 1.3.5.5 | H2 · Modelo predictivo validado | milestone | 0d | 2027-01-21 | 2027-01-21 | 73 | 2027-01-21 | 2027-01-21 | 0d | 3d | 0d |  |  | Científico de datos |
| 75 | 1.4 | **Backend e integración** |  | 37d | 2026-12-07 | 2027-02-01 |  | 2026-12-07 | 2027-02-01 | 37d | 0d |  |  | 272h |  |
| 76 | 1.4.1 | **EDT-1.4.01 · Base de datos SQLite** |  | 5d | 2026-12-07 | 2026-12-15 |  | 2026-12-07 | 2026-12-15 | 5d | 0d |  |  | 40h | Desarrollador backend |
| 77 | 1.4.1.1 | Crear tablas de clientes y atenciones |  | 2d | 2026-12-07 | 2026-12-10 | 48 | 2026-12-07 | 2026-12-10 | 2d | 0d |  | Desarrollador backend | 16h | Desarrollador backend |
| 78 | 1.4.1.2 | Crear tablas de predicciones y sincronización |  | 2d | 2026-12-11 | 2026-12-14 | 77 | 2026-12-11 | 2026-12-14 | 2d | 0d |  | Desarrollador backend | 16h | Desarrollador backend |
| 79 | 1.4.1.3 | Crear índices y datos iniciales |  | 1d | 2026-12-15 | 2026-12-15 | 78 | 2026-12-15 | 2026-12-15 | 1d | 0d |  | Desarrollador backend | 8h | Desarrollador backend |

| ID | WBS | Task | Duration | Start | Finish | Predecessors | Baseline start | Baseline finish | Baseline duration | Total slack | Free slack | Resources | Work | Text1 |
| --- | --- | --- | --- | --- | --- | --- | --- | --- | --- | --- | --- | --- | --- | --- |
| 80 | 1.4.2 | **EDT-1.4.02 · Lectura y validación del Excel** | 5d | 2026-12-16 | 2026-12-22 |  | 2026-12-16 | 2026-12-22 | 5d | 0d |  |  | 40h | Desarrollador backend |
| 81 | 1.4.2.1 | Leer la hoja del registro y mapear columnas | 2d | 2026-12-16 | 2026-12-17 | 79, 53 | 2026-12-16 | 2026-12-17 | 2d | 0d |  | Desarrollador backend | 16h | Desarrollador backend |
| 82 | 1.4.2.2 | Validar tipos y campos obligatorios | 2d | 2026-12-18 | 2026-12-21 | 81 | 2026-12-18 | 2026-12-21 | 2d | 0d |  | Desarrollador backend | 16h | Desarrollador backend |
| 83 | 1.4.2.3 | Registrar errores por fila | 1d | 2026-12-22 | 2026-12-22 | 82 | 2026-12-22 | 2026-12-22 | 1d | 0d |  | Desarrollador backend | 8h | Desarrollador backend |
| 84 | 1.4.3 | **EDT-1.4.03 · Sincronización automática** | 6d | 2026-12-23 | 2026-12-31 |  | 2026-12-23 | 2026-12-31 | 6d | 0d |  |  | 48h | Desarrollador backend |
| 85 | 1.4.3.1 | Vigilar cambios del archivo cada 30 s | 2d | 2026-12-23 | 2026-12-24 | 83 | 2026-12-23 | 2026-12-24 | 2d | 0d |  | Desarrollador backend | 16h | Desarrollador backend |
| 86 | 1.4.3.2 | Detectar cambios mediante hash | 2d | 2026-12-28 | 2026-12-29 | 85 | 2026-12-28 | 2026-12-29 | 2d | 0d |  | Desarrollador backend | 16h | Desarrollador backend |
| 87 | 1.4.3.3 | Cargar solo lo nuevo y guardar historial de sincronizaciones | 2d | 2026-12-30 | 2026-12-31 | 86 | 2026-12-30 | 2026-12-31 | 2d | 0d |  | Desarrollador backend | 16h | Desarrollador backend |
| 88 | 1.4.4 | **EDT-1.4.04 · Predicción y alertas** | 7d | 2027-01-22 | 2027-02-01 |  | 2027-01-22 | 2027-02-01 | 7d | 3d |  |  | 72h | Desarrollador backend |
| 89 | 1.4.4.1 | Aplicar la ingeniería de características del modelo | 2d | 2027-01-22 | 2027-01-25 | 87, 74 | 2027-01-22 | 2027-01-25 | 2d | 3d | 0d | Desarrollador backend; Científico de datos | 32h | Desarrollador backend, Científico de datos |
| 90 | 1.4.4.2 | Invocar el modelo y guardar predicciones con historial | 2d | 2027-01-26 | 2027-01-27 | 89 | 2027-01-26 | 2027-01-27 | 2d | 3d | 0d | Desarrollador backend | 16h | Desarrollador backend |
| 91 | 1.4.4.3 | Generar alertas por riesgo e inactividad (90 y 120 días) | 2d | 2027-01-28 | 2027-01-29 | 90 | 2027-01-28 | 2027-01-29 | 2d | 3d | 0d | Desarrollador backend | 16h | Desarrollador backend |
| 92 | 1.4.4.4 | Detectar nuevas alertas por cambio de estado | 1d | 2027-02-01 | 2027-02-01 | 91 | 2027-02-01 | 2027-02-01 | 1d | 3d | 0d | Desarrollador backend | 8h | Desarrollador backend |
| 93 | 1.4.5 | **EDT-1.4.05 · API REST y autenticación** | 9d | 2027-01-04 | 2027-01-14 |  | 2027-01-04 | 2027-01-14 | 9d | 0d |  |  | 72h | Desarrollador backend |
| 94 | 1.4.5.1 | Endpoints de clientes, dashboard y alertas | 3d | 2027-01-04 | 2027-01-06 | 87 | 2027-01-04 | 2027-01-06 | 3d | 0d |  | Desarrollador backend | 24h | Desarrollador backend |
| 95 | 1.4.5.2 | Endpoints de modelo y sincronización | 2d | 2027-01-07 | 2027-01-08 | 94 | 2027-01-07 | 2027-01-08 | 2d | 0d |  | Desarrollador backend | 16h | Desarrollador backend |
| 96 | 1.4.5.3 | Autenticación por token y roles, sin credenciales por defecto | 3d | 2027-01-11 | 2027-01-13 | 95 | 2027-01-11 | 2027-01-13 | 3d | 0d |  | Desarrollador backend | 24h | Desarrollador backend |
| 97 | 1.4.5.4 | Documentar la API | 1d | 2027-01-14 | 2027-01-14 | 96 | 2027-01-14 | 2027-01-14 | 1d | 0d |  | Desarrollador backend | 8h | Desarrollador backend |
| 98 | 1.5 | **Aplicación web CRM** | 44d | 2026-12-16 | 2027-02-17 |  | 2026-12-16 | 2027-02-17 | 44d | 0d |  |  | 232h |  |
| 99 | 1.5.1 | **EDT-1.5.01 · Inicio de sesión y navegación** | 5d | 2026-12-16 | 2026-12-22 |  | 2026-12-16 | 2026-12-22 | 5d | 15d |  |  | 40h | Desarrollador frontend |
| 100 | 1.5.1.1 | Pantalla de inicio de sesión | 2d | 2026-12-16 | 2026-12-17 | 79, 43 | 2026-12-16 | 2026-12-17 | 2d | 15d | 0d | Desarrollador frontend | 16h | Desarrollador frontend |
| 101 | 1.5.1.2 | Menú lateral y rutas protegidas | 2d | 2026-12-18 | 2026-12-21 | 100 | 2026-12-18 | 2026-12-21 | 2d | 15d | 0d | Desarrollador frontend | 16h | Desarrollador frontend |
| 102 | 1.5.1.3 | Cierre de sesión | 1d | 2026-12-22 | 2026-12-22 | 101 | 2026-12-22 | 2026-12-22 | 1d | 15d |  | Desarrollador frontend | 8h | Desarrollador frontend |
| 103 | 1.5.2 | **EDT-1.5.02 · Dashboard analítico** | 8d | 2027-01-15 | 2027-01-26 |  | 2027-01-15 | 2027-01-26 | 8d | 0d |  |  | 64h | Desarrollador frontend |
| 104 | 1.5.2.1 | Indicadores de clientes y riesgo | 3d | 2027-01-15 | 2027-01-19 | 102, 97 | 2027-01-15 | 2027-01-19 | 3d | 0d |  | Desarrollador frontend | 24h | Desarrollador frontend |
| 105 | 1.5.2.2 | Distribución por nivel de riesgo y estado temporal | 3d | 2027-01-20 | 2027-01-22 | 104 | 2027-01-20 | 2027-01-22 | 3d | 0d |  | Desarrollador frontend | 24h | Desarrollador frontend |
| 106 | 1.5.2.3 | Evolución de alertas en el tiempo | 2d | 2027-01-25 | 2027-01-26 | 105 | 2027-01-25 | 2027-01-26 | 2d | 0d |  | Desarrollador frontend | 16h | Desarrollador frontend |

| ID | WBS | Task | Duration | Start | Finish | Predecessors | Baseline start | Baseline finish | Baseline duration | Total slack | Free slack | Resources | Work | Text1 |
| --- | --- | --- | --- | --- | --- | --- | --- | --- | --- | --- | --- | --- | --- | --- |
| 107 | 1.5.3 | **EDT-1.5.03 · Clientes y ficha 360°** | 9d | 2027-01-27 | 2027-02-08 |  | 2027-01-27 | 2027-02-08 | 9d | 0d |  |  | 72h | Desarrollador frontend |
| 108 | 1.5.3.1 | Listado con filtros y exportación | 3d | 2027-01-27 | 2027-01-29 | 106 | 2027-01-27 | 2027-01-29 | 3d | 0d |  | Desarrollador frontend | 24h | Desarrollador frontend |
| 109 | 1.5.3.2 | Ficha 360° con historial, gasto y última visita | 4d | 2027-02-01 | 2027-02-04 | 108 | 2027-02-01 | 2027-02-04 | 4d | 0d |  | Desarrollador frontend | 32h | Desarrollador frontend |
| 110 | 1.5.3.3 | Barra de inactividad e historial de predicciones | 2d | 2027-02-05 | 2027-02-08 | 109 | 2027-02-05 | 2027-02-08 | 2d | 0d |  | Desarrollador frontend | 16h | Desarrollador frontend |
| 111 | 1.5.4 | **EDT-1.5.04 · Centro de alertas y vistas del sistema** | 7d | 2027-02-09 | 2027-02-17 |  | 2027-02-09 | 2027-02-17 | 7d | 0d |  |  | 56h | Desarrollador frontend |
| 112 | 1.5.4.1 | Listado de alertas por prioridad y marcado de revisadas | 3d | 2027-02-09 | 2027-02-11 | 110 | 2027-02-09 | 2027-02-11 | 3d | 0d |  | Desarrollador frontend | 24h | Desarrollador frontend |
| 113 | 1.5.4.2 | Estado e historial de sincronizaciones y sincronización manual | 2d | 2027-02-12 | 2027-02-15 | 112 | 2027-02-12 | 2027-02-15 | 2d | 0d |  | Desarrollador frontend | 16h | Desarrollador frontend |
| 114 | 1.5.4.3 | Métricas del modelo y variables más importantes | 2d | 2027-02-16 | 2027-02-17 | 113 | 2027-02-16 | 2027-02-17 | 2d | 0d |  | Desarrollador frontend | 16h | Desarrollador frontend |
| 115 | 1.6 | **Módulo de retención** | 37d | 2027-01-15 | 2027-03-08 |  | 2027-01-15 | 2027-03-08 | 37d | 0d |  |  | 240h |  |
| 116 | 1.6.1 | **EDT-1.6.01 · Modelo de datos de retención** | 5d | 2027-01-15 | 2027-01-21 |  | 2027-01-15 | 2027-01-21 | 5d | 10d |  |  | 40h | Desarrollador backend |
| 117 | 1.6.1.1 | Tablas de casos, acciones e historial | 2d | 2027-01-15 | 2027-01-18 | 97 | 2027-01-15 | 2027-01-18 | 2d | 10d | 0d | Desarrollador backend | 16h | Desarrollador backend |
| 118 | 1.6.1.2 | Tablas de plantillas, beneficios, cupones y campañas | 2d | 2027-01-19 | 2027-01-20 | 117 | 2027-01-19 | 2027-01-20 | 2d | 10d | 0d | Desarrollador backend | 16h | Desarrollador backend |
| 119 | 1.6.1.3 | Preferencias de contacto y configuración | 1d | 2027-01-21 | 2027-01-21 | 118 | 2027-01-21 | 2027-01-21 | 1d | 10d | 7d | Desarrollador backend | 8h | Desarrollador backend |
| 120 | 1.6.2 | **EDT-1.6.02 · Motor de casos y recuperación** | 9d | 2027-02-02 | 2027-02-12 |  | 2027-02-02 | 2027-02-12 | 9d | 3d |  |  | 96h | Desarrollador backend |
| 121 | 1.6.2.1 | Evaluar clientes tras cada sincronización | 2d | 2027-02-02 | 2027-02-03 | 119, 92 | 2027-02-02 | 2027-02-03 | 2d | 3d | 0d | Desarrollador backend | 16h | Desarrollador backend |
| 122 | 1.6.2.2 | Asignar prioridad, motivo y siguiente mejor acción | 3d | 2027-02-04 | 2027-02-08 | 121 | 2027-02-04 | 2027-02-08 | 3d | 3d | 0d | Desarrollador backend; Científico de datos | 48h | Desarrollador backend, Científico de datos |
| 123 | 1.6.2.3 | Evitar duplicados y subir prioridad si el riesgo empeora | 2d | 2027-02-09 | 2027-02-10 | 122 | 2027-02-09 | 2027-02-10 | 2d | 3d | 0d | Desarrollador backend | 16h | Desarrollador backend |
| 124 | 1.6.2.4 | Detectar nuevas visitas y registrar el ingreso recuperado | 2d | 2027-02-11 | 2027-02-12 | 123 | 2027-02-11 | 2027-02-12 | 2d | 3d | 0d | Desarrollador backend | 16h | Desarrollador backend |
| 125 | 1.6.3 | **EDT-1.6.03 · Centro de Retención** | 8d | 2027-02-18 | 2027-03-01 |  | 2027-02-18 | 2027-03-01 | 8d | 0d |  |  | 64h | Desarrollador frontend |
| 126 | 1.6.3.1 | Bandeja de casos por prioridad y estado | 3d | 2027-02-18 | 2027-02-22 | 124, 114 | 2027-02-18 | 2027-02-22 | 3d | 0d |  | Desarrollador frontend | 24h | Desarrollador frontend |
| 127 | 1.6.3.2 | Detalle del caso con historial y acciones | 3d | 2027-02-23 | 2027-02-25 | 126 | 2027-02-23 | 2027-02-25 | 3d | 0d |  | Desarrollador frontend | 24h | Desarrollador frontend |
| 128 | 1.6.3.3 | Cambio de estado y seguimiento | 2d | 2027-02-26 | 2027-03-01 | 127 | 2027-02-26 | 2027-03-01 | 2d | 0d |  | Desarrollador frontend | 16h | Desarrollador frontend |
| 129 | 1.6.4 | **EDT-1.6.04 · Contacto por WhatsApp** | 5d | 2027-03-02 | 2027-03-08 |  | 2027-03-02 | 2027-03-08 | 5d | 0d |  |  | 40h | Desarrollador frontend |
| 130 | 1.6.4.1 | Generar el mensaje desde la plantilla | 1d | 2027-03-02 | 2027-03-02 | 128 | 2027-03-02 | 2027-03-02 | 1d | 0d |  | Desarrollador frontend | 8h | Desarrollador frontend |
| 131 | 1.6.4.2 | Abrir WhatsApp con el mensaje editable | 2d | 2027-03-03 | 2027-03-04 | 130 | 2027-03-03 | 2027-03-04 | 2d | 0d |  | Desarrollador frontend | 16h | Desarrollador frontend |
| 132 | 1.6.4.3 | Verificar consentimiento y registrar la respuesta | 2d | 2027-03-05 | 2027-03-08 | 131 | 2027-03-05 | 2027-03-08 | 2d | 0d |  | Desarrollador frontend | 16h | Desarrollador frontend |

| ID | WBS | Task | Type | Duration | Start | Finish | Predecessors | Baseline start | Baseline finish | Baseline duration | Total slack | Free slack | Resources | Work | Text1 |
| --- | --- | --- | --- | --- | --- | --- | --- | --- | --- | --- | --- | --- | --- | --- | --- |
| 133 | 1.7 | **Pruebas y calidad** |  | 84d | 2026-11-26 | 2027-03-31 |  | 2026-11-26 | 2027-03-31 | 84d | 0d |  |  | 256h |  |
| 134 | 1.7.1 | **EDT-1.7.01 · Plan y casos de prueba** |  | 7d | 2026-11-26 | 2026-12-04 |  | 2026-11-26 | 2026-12-04 | 7d | 55d |  |  | 56h | QA y capacitación |
| 135 | 1.7.1.1 | Redactar el plan de pruebas |  | 2d | 2026-11-26 | 2026-11-27 | 33 | 2026-11-26 | 2026-11-27 | 2d | 55d | 0d | QA y capacitación | 16h | QA y capacitación |
| 136 | 1.7.1.2 | Diseñar casos de prueba por requisito |  | 3d | 2026-11-30 | 2026-12-02 | 135 | 2026-11-30 | 2026-12-02 | 3d | 55d | 0d | QA y capacitación | 24h | QA y capacitación |
| 137 | 1.7.1.3 | Preparar datos de prueba anonimizados |  | 2d | 2026-12-03 | 2026-12-04 | 136 | 2026-12-03 | 2026-12-04 | 2d | 55d | 25d | QA y capacitación | 16h | QA y capacitación |
| 138 | 1.7.2 | **EDT-1.7.02 · Pruebas unitarias e integración** |  | 40d | 2027-01-15 | 2027-03-11 |  | 2027-01-15 | 2027-03-11 | 40d | 0d |  |  | 80h | QA y capacitación |
| 139 | 1.7.2.1 | Automatizar pruebas del backend |  | 4d | 2027-01-15 | 2027-01-20 | 97, 137 | 2027-01-15 | 2027-01-20 | 4d | 30d | 17d | QA y capacitación | 32h | QA y capacitación |
| 140 | 1.7.2.2 | Probar la integración con el Excel y el modelo |  | 3d | 2027-02-15 | 2027-02-17 | 139, 124 | 2027-02-15 | 2027-02-17 | 3d | 13d |  | QA y capacitación | 24h | QA y capacitación |
| 141 | 1.7.2.3 | Corregir defectos encontrados |  | 3d | 2027-03-09 | 2027-03-11 | 140, 132, 114 | 2027-03-09 | 2027-03-11 | 3d | 0d |  | QA y capacitación | 24h | QA y capacitación |
| 142 | 1.7.2.4 | H3 · Sistema integrado | milestone | 0d | 2027-03-11 | 2027-03-11 | 141 | 2027-03-11 | 2027-03-11 | 0d | 0d |  |  |  | QA y capacitación |
| 143 | 1.7.3 | **EDT-1.7.03 · Pruebas integrales del sistema** |  | 7d | 2027-03-12 | 2027-03-22 |  | 2027-03-12 | 2027-03-22 | 7d | 0d |  |  | 56h | QA y capacitación |
| 144 | 1.7.3.1 | Ejecutar escenarios de extremo a extremo |  | 3d | 2027-03-12 | 2027-03-16 | 142 | 2027-03-12 | 2027-03-16 | 3d | 0d |  | QA y capacitación | 24h | QA y capacitación |
| 145 | 1.7.3.2 | Probar rendimiento con el volumen real |  | 2d | 2027-03-17 | 2027-03-18 | 144 | 2027-03-17 | 2027-03-18 | 2d | 0d |  | QA y capacitación | 16h | QA y capacitación |
| 146 | 1.7.3.3 | Probar seguridad, respaldo y restauración |  | 2d | 2027-03-19 | 2027-03-22 | 145 | 2027-03-19 | 2027-03-22 | 2d | 0d |  | QA y capacitación | 16h | QA y capacitación |
| 147 | 1.7.4 | **EDT-1.7.04 · Pruebas de aceptación (UAT)** |  | 5d | 2027-03-23 | 2027-03-31 |  | 2027-03-23 | 2027-03-31 | 5d | 0d |  |  | 64h | QA y capacitación |
| 148 | 1.7.4.1 | Recorrer los 7 módulos con la administradora |  | 2d | 2027-03-23 | 2027-03-24 | 146 | 2027-03-23 | 2027-03-24 | 2d | 0d |  | QA y capacitación; Administradora | 32h | QA y capacitación, Administradora |
| 149 | 1.7.4.2 | Registrar y resolver observaciones |  | 2d | 2027-03-29 | 2027-03-30 | 148 | 2027-03-29 | 2027-03-30 | 2d | 0d |  | QA y capacitación | 16h | QA y capacitación |
| 150 | 1.7.4.3 | Firmar el acta de aceptación de usuario |  | 1d | 2027-03-31 | 2027-03-31 | 149 | 2027-03-31 | 2027-03-31 | 1d | 0d |  | QA y capacitación; Administradora | 16h | QA y capacitación, Administradora |
| 151 | 1.8 | **Despliegue y transición** |  | 33d | 2027-03-09 | 2027-04-26 |  | 2027-03-09 | 2027-04-26 | 33d | 0d |  |  | 384h |  |
| 152 | 1.8.1 | **EDT-1.8.01 · Entorno de producción y respaldo** |  | 5d | 2027-03-23 | 2027-03-31 |  | 2027-03-23 | 2027-03-31 | 5d | 0d |  |  | 40h | Desarrollador backend |
| 153 | 1.8.1.1 | Instalar dependencias y el sistema |  | 1d | 2027-03-23 | 2027-03-23 | 146 | 2027-03-23 | 2027-03-23 | 1d | 0d |  | Desarrollador backend | 8h | Desarrollador backend |
| 154 | 1.8.1.2 | Configurar usuarios por rol, claves, ruta del Excel y fecha de corte real |  | 2d | 2027-03-24 | 2027-03-29 | 153 | 2027-03-24 | 2027-03-29 | 2d | 0d |  | Desarrollador backend | 16h | Desarrollador backend |
| 155 | 1.8.1.3 | Crear el script de inicio de operación |  | 1d | 2027-03-30 | 2027-03-30 | 154 | 2027-03-30 | 2027-03-30 | 1d | 0d |  | Desarrollador backend | 8h | Desarrollador backend |
| 156 | 1.8.1.4 | Programar y probar el respaldo diario |  | 1d | 2027-03-31 | 2027-03-31 | 155 | 2027-03-31 | 2027-03-31 | 1d | 0d |  | Desarrollador backend | 8h | Desarrollador backend |

| ID | WBS | Task | Type | Duration | Start | Finish | Predecessors | Baseline start | Baseline finish | Baseline duration | Total slack | Free slack | Resources | Work |
| --- | --- | --- | --- | --- | --- | --- | --- | --- | --- | --- | --- | --- | --- | --- |
| 157 | 1.8.2 | **EDT-1.8.02 · Documentación y manuales** |  | 6d | 2027-03-09 | 2027-03-16 |  | 2027-03-09 | 2027-03-16 | 6d | 9d |  |  | 48h |
| 158 | 1.8.2.1 | Redactar el README técnico y la guía de instalación |  | 2d | 2027-03-09 | 2027-03-10 | 132 | 2027-03-09 | 2027-03-10 | 2d | 9d | 0d | Analista funcional | 16h |
| 159 | 1.8.2.2 | Redactar el manual de usuario por rol |  | 3d | 2027-03-11 | 2027-03-15 | 158 | 2027-03-11 | 2027-03-15 | 3d | 9d | 0d | Analista funcional | 24h |
| 160 | 1.8.2.3 | Elaborar la guía rápida «qué hacer con una alerta» |  | 1d | 2027-03-16 | 2027-03-16 | 159 | 2027-03-16 | 2027-03-16 | 1d | 9d |  | Analista funcional | 8h |
| 161 | 1.8.3 | **EDT-1.8.03 · Capacitación por rol** |  | 4d | 2027-04-01 | 2027-04-06 |  | 2027-04-01 | 2027-04-06 | 4d | 0d |  |  | 40h |
| 162 | 1.8.3.1 | Taller para administradora y dueña |  | 1d | 2027-04-01 | 2027-04-01 | 156, 160, 150 | 2027-04-01 | 2027-04-01 | 1d | 0d |  | QA y capacitación; Administradora | 16h |
| 163 | 1.8.3.2 | Taller para recepcionista |  | 1d | 2027-04-02 | 2027-04-02 | 162 | 2027-04-02 | 2027-04-02 | 1d | 0d |  | QA y capacitación | 8h |
| 164 | 1.8.3.3 | Taller para cosmiatras |  | 1d | 2027-04-05 | 2027-04-05 | 163 | 2027-04-05 | 2027-04-05 | 1d | 0d |  | QA y capacitación | 8h |
| 165 | 1.8.3.4 | Evaluación práctica por usuaria |  | 1d | 2027-04-06 | 2027-04-06 | 164 | 2027-04-06 | 2027-04-06 | 1d | 0d |  | QA y capacitación | 8h |
| 166 | 1.8.4 | **EDT-1.8.04 · Go-live y estabilización** |  | 12d | 2027-04-07 | 2027-04-22 |  | 2027-04-07 | 2027-04-22 | 12d | 0d |  |  | 240h |
| 167 | 1.8.4.1 | Comunicar el go-live y la ventana de corte |  | 1d | 2027-04-07 | 2027-04-07 | 165 | 2027-04-07 | 2027-04-07 | 1d | 0d |  | Director del proyecto | 8h |
| 168 | 1.8.4.2 | H4 · Puesta en producción (go-live) | milestone | 0d | 2027-04-07 | 2027-04-07 | 167 | 2027-04-07 | 2027-04-07 | 0d | 0d |  |  |  |
| 169 | 1.8.4.3 | Brindar soporte asistido y atender incidentes |  | 9d | 2027-04-08 | 2027-04-20 | 168 | 2027-04-08 | 2027-04-20 | 9d | 0d |  | Desarrollador backend; Desarrollador frontend; QA y capacitación | 216h |
| 170 | 1.8.4.4 | Ajustar reglas y medir la adopción |  | 2d | 2027-04-21 | 2027-04-22 | 169 | 2027-04-21 | 2027-04-22 | 2d | 0d |  | Analista funcional | 16h |
| 171 | 1.8.5 | **EDT-1.8.05 · Transferencia a la operación** |  | 2d | 2027-04-23 | 2027-04-26 |  | 2027-04-23 | 2027-04-26 | 2d | 0d |  |  | 16h |
| 172 | 1.8.5.1 | Entregar accesos, código, respaldos y documentación |  | 1d | 2027-04-23 | 2027-04-23 | 170 | 2027-04-23 | 2027-04-23 | 1d | 0d |  | Director del proyecto | 8h |
| 173 | 1.8.5.2 | Firmar el acta de transferencia |  | 1d | 2027-04-26 | 2027-04-26 | 172 | 2027-04-26 | 2027-04-26 | 1d | 0d |  | Director del proyecto | 8h |

Notes:
- 157: Text1: Analista funcional
- 158: Text1: Analista funcional
- 159: Text1: Analista funcional
- 160: Text1: Analista funcional
- 161: Text1: QA y capacitación
- 162: Text1: QA y capacitación, Administradora
- 163: Text1: QA y capacitación
- 164: Text1: QA y capacitación
- 165: Text1: QA y capacitación
- 166: Text1: Director del proyecto
- 167: Text1: Director del proyecto
- 168: Text1: Director del proyecto
- 169: Text1: Desarrollador backend, Desarrollador frontend, QA y capacitación
- 170: Text1: Analista funcional
- 171: Text1: Director del proyecto
- 172: Text1: Director del proyecto
- 173: Text1: Director del proyecto
